# Console

Schedule from MS Project, 2009-12-06 to 2010-05-24.

## Calendars

- Standard: Mon-Sun 08:00-12:00, 13:00-17:00.

## Resources

| Resource |
| --- |
| Francois Gervais |
| Jimmy Vaillancour |
| Sébastien Fournier |
| Simon Brassard |
| Alexandre Duperré |
| Steeve Simard |
| Émile Bergeron |

## Schedule

| ID | WBS | Task | Duration | Start | Finish | Predecessors | Total slack | Free slack | Constraint | Resources | Work |
| --- | --- | --- | --- | --- | --- | --- | --- | --- | --- | --- | --- |
| 1 | 1 | Choix du micro-controlleur | 21d? | 2009-12-06 | 2009-12-26 |  | 6d | 0d | finish no earlier than 2009-12-26 | Francois Gervais | 168h |
| 2 | 2 | Programmation du "bootstrap" | 1d? | 2009-12-27 | 2009-12-27 | 1 | 6d |  |  | Francois Gervais | 8h |
| 3 | 3 | Adaptation du Makefile | 1d? | 2009-12-31 | 2009-12-31 | 1 | 6d |  | start no earlier than 2009-12-31 | Francois Gervais | 8h |
| 4 | 4 | Adaptation du linker script | 1d? | 2010-01-02 | 2010-01-02 | 1 | 4d |  | start no earlier than 2010-01-02 | Francois Gervais | 8h |
| 5 | 5 | Implementation des classes Gpio et GpioPin | 3d? | 2010-01-07 | 2010-01-09 | 4, 3, 2 | 84d |  | finish no earlier than 2010-01-09 | Francois Gervais | 24h |
| 6 | 6 | Configuration du PLL | 1d? | 2010-01-09 | 2010-01-09 |  | 16d |  | start no earlier than 2010-01-09 | Francois Gervais | 8h |
| 7 | 7 | Configuration des interruptions | 10d? | 2010-01-13 | 2010-01-22 |  | 3d |  | finish no earlier than 2010-01-22 | Francois Gervais | 80h |
| 8 | 8 | Initialisation du module USB | 4d? | 2010-01-22 | 2010-01-25 |  | 24d |  | finish no earlier than 2010-01-25 | Francois Gervais | 32h |
| 9 | 9 | Attente de réception de la carte de développement | 24d? | 2010-01-25 | 2010-02-17 |  | 7d | 0d | finish no earlier than 2010-02-17 | Francois Gervais | 192h |
| 10 | 10 | Test de la section Gpio | 1d? | 2010-02-18 | 2010-02-18 | 9 | 7d |  | start no earlier than 2010-02-18 | Francois Gervais | 8h |
| 11 | 11 | Test de l'initialisation USB | 1d? | 2010-02-21 | 2010-02-21 |  | 4d |  | start no earlier than 2010-02-21 | Francois Gervais | 8h |
| 12 | 12 | Programmation du module LCD | 4d? | 2010-02-22 | 2010-02-25 |  | 90d | 0d | finish no earlier than 2010-02-25 | Francois Gervais | 32h |
| 13 | 13 | Programmation du module SDRAM | 2d? | 2010-02-24 | 2010-02-25 |  | 90d | 0d | finish no earlier than 2010-02-25 | Francois Gervais | 16h |
| 14 | 14 | Implémentation de la class DisplayHelper pour l'affichage d'image | 2d? | 2010-02-26 | 2010-02-27 | 13, 12 | 90d |  | finish no earlier than 2010-02-27 | Francois Gervais | 16h |
| 15 | 15 | Test d'une image animée sur le LCD | 1d? | 2010-02-28 | 2010-02-28 |  | 89d |  | start no earlier than 2010-02-28 | Francois Gervais | 8h |
| 16 | 16 | Travail sur l'affichage de police à l'écran | 4d? | 2010-03-05 | 2010-03-08 |  | 81d |  | finish no earlier than 2010-03-08 | Francois Gervais | 32h |
| 17 | 17 | **Programmation du moteur de jeux** | 81d? | 2010-03-05 | 2010-05-24 |  | 0d |  |  | Francois Gervais | 912h |
| 18 | 17.1 | Planification de l'implémentation | 4d? | 2010-03-05 | 2010-03-08 |  | 22d | 0d | finish no earlier than 2010-03-08 | Francois Gervais | 32h |
| 19 | 17.2 | Programmation des contenants du moteur | 1d? | 2010-03-09 | 2010-03-09 | 18 | 48d |  |  | Francois Gervais | 8h |
| 20 | 17.3 | Travail sur le DMA | 1d? | 2010-03-13 | 2010-03-13 |  | 62d |  | start no earlier than 2010-03-13 | Francois Gervais | 8h |
| 21 | 17.4 | Test du Tile rendering et scrolling | 1d? | 2010-04-26 | 2010-04-26 |  | 18d |  | start no earlier than 2010-04-26 | Francois Gervais | 8h |
| 22 | 17.5 | Travail sur le background rendering | 1d? | 2010-04-27 | 2010-04-27 |  | 17d |  | start no earlier than 2010-04-27 | Francois Gervais | 8h |
| 23 | 17.6 | Optimisation du background rendering | 1d? | 2010-04-28 | 2010-04-28 |  | 16d |  | start no earlier than 2010-04-28 | Francois Gervais | 8h |
| 24 | 17.7 | Développement du hero | 16d? | 2010-04-29 | 2010-05-14 |  | 10d |  | finish no earlier than 2010-05-14 | Francois Gervais | 128h |
| 25 | 17.8 | Développement des ennemis | 8d? | 2010-05-17 | 2010-05-24 |  | 0d |  | finish no earlier than 2010-05-24 | Francois Gervais | 64h |
| 26 | 18 | Modification de la configuration du PLL | 1d? | 2010-03-23 | 2010-03-23 |  | 34d |  | start no earlier than 2010-03-23 | Francois Gervais | 8h |
| 27 | 19 | Configuration du module pour carte SD | 3d? | 2010-03-25 | 2010-03-27 |  | 30d |  | finish no earlier than 2010-03-27 | Francois Gervais | 24h |
| 28 | 20 | Implémentation du support FAT32 | 3d? | 2010-03-25 | 2010-03-27 |  | 30d |  | finish no earlier than 2010-03-27 | Francois Gervais | 24h |
| 29 | 21 | Prise en charge des fichier Bitmap | 1d? | 2010-03-30 | 2010-03-30 |  | 27d |  | start no earlier than 2010-03-30 | Francois Gervais | 8h |
| 30 | 22 | Gestion du sons | 1d? | 2010-04-03 | 2010-04-03 |  | 23d |  | start no earlier than 2010-04-03 | Francois Gervais | 8h |
| 31 | 23 | Prise en charge des fichier Wave | 1d? | 2010-04-03 | 2010-04-03 |  | 23d |  | start no earlier than 2010-04-03 | Francois Gervais | 8h |
